# UTP-GPS-ALARM

Schedule from MS Project, 2015-09-01 to 2015-11-19, A marks actual dates.

## Calendars

- Calendario UTP: Mon-Sat 09:00-13:00, 15:00-19:00; Sun off. Exceptions (off unless hours are given): 2015-10-08 (Combate de Angamos), 2015-11-01 (Dia de los Muertos).

## Resources

| Resource |
| --- |
| Edwar |
| Julio |
| Roger |
| Profesor |

## Schedule

| ID | WBS | Task | Type | Duration | Start | Finish | Predecessors | Complete | Remaining | Actual start | Actual finish | Total slack | Constraint | Resources | Work | Actual work |
| --- | --- | --- | --- | --- | --- | --- | --- | --- | --- | --- | --- | --- | --- | --- | --- | --- |
| 1 | 1 | **Proyecto UTP-GPS-ALARM** |  | 68d | 2015-09-01 A | 2015-11-19 |  | 26% | 50.65d |  |  | 0d |  | Edwar; Julio; Profesor; Roger | 20099.2h | 2429.72h |
| 2 | 1.1 | **Proceso de Gestion** |  | 68d | 2015-09-01 A | 2015-11-19 |  | 46% | 36.84d |  |  | 0d |  | Edwar; Julio; Roger; Profesor | 11527.2h | 2133.72h |
| 3 | 1.1.1 | **Inicio** |  | 68d | 2015-09-01 A | 2015-11-19 |  | 25% | 51d |  |  |  |  | Edwar; Julio; Roger | 3261h | 413.26h |
| 4 | 1.1.1.1 | Revision de la Metodologia de Trabajo |  | 67.88d | 2015-09-01 A | 2015-11-19 |  | 25% | 50.91d |  |  | 0.12d | finish no earlier than 2015-11-19 | Edwar; Julio; Roger | 1629h | 407.25h |
| 5 | 1.1.2 | **Planificacion** |  | 68d | 2015-09-01 A | 2015-11-19 |  | 80% | 13.88d |  |  | 0d |  | Edwar; Julio; Profesor; Roger | 5644.24h | 1354.46h |
| 6 | 1.1.2.1 | **Plan del Proyecto** |  | 11d | 2015-09-08 | 2015-09-19 | 3 | 91% | 0.99d | 2015-09-01 |  |  |  | Edwar; Julio; Roger | 1408.24h | 1134.46h |
| 7 | 1.1.2.1.1 | **Elaboracion de Plan de Proyecto** |  | 18d | 2015-09-01 A | 2015-09-21 |  | 88% | 2.1d |  |  |  |  | Edwar; Julio; Roger | 981h | 760.5h |
| 8 | 1.1.2.1.1.1 | Definir Nombre del Proyecto |  | 1d | 2015-09-01 A | 2015-09-01 A |  | 100% |  |  |  |  |  | Edwar; Julio; Roger | 24h | 24h |
| 9 | 1.1.2.1.1.2 | Definir Objetivos de Proyecto |  | 1d | 2015-09-02 A | 2015-09-02 A |  | 100% |  |  |  |  |  | Edwar; Julio; Roger | 24h | 24h |
| 10 | 1.1.2.1.1.3 | Definicion de Entregables , Ajuste de Lista de Requerimientos | manual | 1d | 2015-09-04 A | 2015-09-04 A |  | 100% |  |  |  |  |  | Edwar; Julio; Roger | 24h | 24h |
| 11 | 1.1.2.1.1.4 | Elaboracion de Cronograma Detallado | manual | 13d | 2015-09-04 A | 2015-09-18 A |  | 100% |  |  |  |  |  | Roger | 105h | 105h |
| 12 | 1.1.2.1.1.5 | Gestion de Comunicaciones |  | 1d | 2015-09-05 A | 2015-09-05 A |  | 100% |  |  |  |  | finish no earlier than 2015-09-01 | Roger; Julio; Edwar | 24h | 24h |
| 13 | 1.1.2.1.1.6 | Necesidades del Proyecto | manual | 2d | 2015-09-05 A | 2015-09-07 A |  | 100% |  |  |  |  |  | Roger; Julio; Edwar | 51h | 51h |
| 14 | 1.1.2.1.1.7 | Lista de Requerimientos | manual | 3d | 2015-09-09 A | 2015-09-11 A |  | 100% |  |  |  |  |  | Edwar; Julio; Roger | 48h | 48h |
| 15 | 1.1.2.1.1.8 | Identificacion de Riesgos del Proyecto | manual | 6.88d | 2015-09-07 A | 2015-09-19 |  | 44% | 3.88d |  |  |  |  | Roger | 56h | 24h |
| 16 | 1.1.2.1.1.9 | Elaborar Documento de Riesgos del Proyecto |  | 1d | 2015-09-19 A | 2015-09-19 A |  | 100% |  |  |  |  | start no earlier than 2015-09-14 | Roger | 8h | 8h |
| 17 | 1.1.2.1.1.10 | Elaborar Documento Plan de Proyecto |  | 10.88d | 2015-09-08 A | 2015-09-19 |  | 91% | 1d |  |  | 51.12d | finish no earlier than 2015-09-19 | Roger; Edwar | 174h | 158h |
| 18 | 1.1.2.1.1.11 | Traspaso de Informacion |  | 1d | 2015-09-21 A | 2015-09-21 A | 16 | 100% |  |  |  |  |  | Edwar | 8h | 8h |
| 19 | 1.1.2.1.2 | **Revision Interna de Proyecto** |  | 2d | 2015-09-19 A | 2015-09-21 |  | 100% |  |  | 2015-10-05 |  |  |  | 128.24h | 128.24h |
| 20 | 1.1.2.1.2.1 | Revision de Plan de Proyecto por el equipo del Proyecto |  | 1d | 2015-09-19 A | 2015-09-19 A |  | 100% |  |  |  |  | finish no earlier than 2015-09-12 | Edwar; Julio; Roger | 8.6h | 8.6h |
| 21 | 1.1.2.1.2.2 | Ajustes al Plan de Proyecto |  | 0.88d | 2015-09-19 A | 2015-09-19 A | 20 | 100% |  |  |  |  | finish no earlier than 2015-09-19 | Edwar; Julio; Roger | 7.64h | 7.64h |
| 22 | 1.1.2.1.2.3 | Elaborar Acta de Revision de Documento |  | 1d | 2015-09-19 A | 2015-09-19 A | 24, 21 | 100% |  |  |  |  |  | Roger | 8h | 8h |
| 23 | 1.1.2.1.2.4 | Traspaso de Informacion |  | 1d | 2015-09-21 A | 2015-09-21 A | 22 | 100% |  |  |  |  | start no earlier than 2015-09-21 | Edwar | 8h | 8h |
| 24 | 1.1.2.1.2.5 | **Aseguramiento de la Calidad de Proyecto** |  | 6d | 2015-09-29 A | 2015-10-05 A |  | 100% |  |  |  |  |  | Julio | 96h | 96h |
| 25 | 1.1.2.1.2.5.1 | Preparar Actividades de QA |  | 1d | 2015-09-29 A | 2015-09-29 A |  | 100% |  |  |  |  |  | Julio | 8h | 8h |
| 26 | 1.1.2.1.2.5.2 | Ejecutar la Revision de QA-Procesos |  | 1d | 2015-09-30 A | 2015-09-30 A | 25 | 100% |  |  |  |  |  | Julio | 8h | 8h |
| 27 | 1.1.2.1.2.5.3 | Levantar la No Conformidad |  | 1d | 2015-10-01 A | 2015-10-01 A | 26 | 100% |  |  |  |  |  | Julio | 8h | 8h |
| 28 | 1.1.2.1.2.5.4 | Realizar el seguimiento |  | 1d | 2015-10-02 A | 2015-10-02 A | 27 | 100% |  |  |  |  |  | Julio | 8h | 8h |
| 29 | 1.1.2.1.2.5.5 | Elaborar e informar las actividades de QA a Jefe de Proyecto |  | 1d | 2015-10-03 A | 2015-10-03 A | 28 | 100% |  |  |  |  |  | Julio | 8h | 8h |
| 30 | 1.1.2.1.2.5.6 | Traspaso de Informacion |  | 1d | 2015-10-05 A | 2015-10-05 A | 29 | 100% |  |  |  |  |  | Edwar | 8h | 8h |

| ID | WBS | Task | Type | Duration | Start | Finish | Predecessors | Complete | Remaining | Total slack | Free slack | Constraint | Resources | Work | Actual work |
| --- | --- | --- | --- | --- | --- | --- | --- | --- | --- | --- | --- | --- | --- | --- | --- |
| 31 | 1.1.2.1.3 | **Gestion de la Configuracion** |  | 2d | 2015-09-04 A | 2015-09-05 A |  | 100% |  |  |  |  | Edwar | 36h | 36h |
| 32 | 1.1.2.1.3.1 | Establecer Repositorio de Datos | manual | 2d | 2015-09-04 A | 2015-09-05 A |  | 100% |  |  |  | finish no earlier than 2015-09-11 | Edwar | 16h | 16h |
| 33 | 1.1.2.1.3.2 | Asignar Gestor de Configuracion |  | 0.5d | 2015-09-05 A | 2015-09-05 A | 32 | 100% |  |  |  | finish no earlier than 2015-09-05 | Roger | 4h | 4h |
| 34 | 1.1.2.2 | **Revision por el Cliente (Profesor)** |  | 3d | 2015-09-15 A | 2015-09-17 |  | 99% | 0d |  |  |  | Edwar; Julio; Profesor; Roger | 220h | 188h |
| 35 | 1.1.2.2.1 | Entrega de Plan de Proyecto |  | 1d | 2015-09-15 A | 2015-09-15 A |  | 100% |  |  |  | start no earlier than 2015-09-10 | Edwar; Julio; Roger | 24h | 24h |
| 36 | 1.1.2.2.2 | Reunion Conjunta de Revision del Plan de Proyecto |  | 2.88d | 2015-09-15 A | 2015-09-17 A | 35 | 100% |  |  |  | finish no earlier than 2015-09-17 | Edwar; Julio; Profesor; Roger | 92h | 92h |
| 37 | 1.1.2.2.3 | Traspaso de Informacion |  | 1d | 2015-09-19 A | 2015-09-19 A | 36 | 100% |  |  |  |  | Edwar | 8h | 8h |
| 38 | 1.1.2.3 | **Kick Off Meeting Externos** |  | 48d | 2015-09-24 | 2015-11-19 |  |  |  | -0.12d | 0d |  | Edwar; Julio; Profesor; Roger | 1840h |  |
| 39 | 1.1.2.3.1 | **1 Presentacion del Proyecto** |  | 2d | 2015-09-24 | 2015-09-25 |  |  |  |  |  |  | Edwar; Julio; Roger | 112h |  |
| 40 | 1.1.2.3.1.1 | Revision de Entregables de Area de Proceso PP-PMC |  | 1d | 2015-09-24 | 2015-09-24 |  |  |  | 47d |  | start no earlier than 2015-09-24 | Edwar; Julio; Roger | 24h |  |
| 41 | 1.1.2.3.1.2 | Acta de Reunion con acuerdos tomados |  | 1d | 2015-09-24 | 2015-09-24 |  |  |  | -0.12d | 0d | start no earlier than 2015-09-24 | Edwar; Julio; Profesor; Roger | 32h |  |
| 42 | 1.1.2.3.1.3 | Traspaso de Informacion |  | 1d | 2015-09-25 | 2015-09-25 | 41 |  |  | -0.12d | 0d |  | Edwar | 8h |  |
| 43 | 1.1.2.3.2 | **2 Presentacion del Proyecto** |  | 1d | 2015-10-22 | 2015-10-22 |  |  |  |  |  |  | Edwar; Julio; Roger | 96h |  |
| 44 | 1.1.2.3.2.1 | Kick Off Meeting con Profesor |  | 1d | 2015-10-22 | 2015-10-22 |  |  |  | -1.12d | 0d |  | Edwar; Julio; Profesor; Roger | 32h |  |
| 45 | 1.1.2.3.2.2 | Acta de Reunion con acuerdos tomados |  | 1d | 2015-10-23 | 2015-10-23 | 44 |  |  | -1.12d | 0d |  | Edwar; Julio; Profesor; Roger | 32h |  |
| 46 | 1.1.2.3.2.3 | Traspaso de Informacion |  | 1d | 2015-10-22 | 2015-10-22 |  |  |  | -0.12d | 0d |  | Edwar | 8h |  |
| 47 | 1.1.2.3.3 | **3 Presentacion del Proyecto** |  | 1d | 2015-11-19 | 2015-11-19 |  |  |  |  |  |  | Edwar; Julio; Roger | 96h |  |
| 48 | 1.1.2.3.3.1 | Kick Off Meeting con Profesor |  | 1d | 2015-11-19 | 2015-11-19 |  |  |  | -0.12d | 0d |  | Edwar; Julio; Profesor; Roger | 32h |  |
| 49 | 1.1.2.3.3.2 | Acta de Reunion con acuerdos tomados |  | 1d | 2015-11-19 | 2015-11-19 |  |  |  | 0d |  | start no earlier than 2015-11-19 | Edwar; Julio; Profesor; Roger | 32h |  |
| 50 | 1.1.2.3.3.3 | Traspaso de Informacion |  | 1d | 2015-11-18 | 2015-11-19 |  |  |  | 0.12d |  | finish no earlier than 2015-11-19 | Edwar | 8h |  |
| 51 | 1.1.3 | **Asignacion,Ejecucion, Seguimiento y Control** |  | 61.88d | 2015-09-08 A | 2015-11-19 |  | 32% | 42.13d | 0d |  |  |  | 384h | 360h |
| 52 | 1.1.3.1 | **Desarrollo del Area de Proceso PP- PPMC** |  | 12d | 2015-09-08 A | 2015-09-21 A |  | 100% |  |  |  |  | Edwar; Roger | 360h | 360h |
| 53 | 1.1.3.1.1 | Elaborar Plantilla de Reunion Quincenal |  | 1d | 2015-09-08 A | 2015-09-08 A |  | 100% |  |  |  |  | Roger | 8h | 8h |
| 54 | 1.1.3.1.2 | Elaborar Plantilla de Gestion de Riesgos |  | 1d | 2015-09-09 A | 2015-09-09 A | 53 | 100% |  |  |  |  | Roger | 8h | 8h |
| 55 | 1.1.3.1.3 | Elaborar Plantilla de Informe de Actividades Quincenales |  | 2d | 2015-09-10 A | 2015-09-11 A | 54 | 100% |  |  |  |  | Roger | 16h | 16h |
| 56 | 1.1.3.1.4 | Elaborar Plantillas de Actas de Reunion Quincenal |  | 1d | 2015-09-11 A | 2015-09-11 A | 55 | 100% |  |  |  |  | Roger | 8h | 8h |
| 57 | 1.1.3.1.5 | Elaborar Plantilla CheckList de Agenda a Reuniones Quincenales |  | 1d | 2015-09-12 A | 2015-09-12 A | 56 | 100% |  |  |  |  | Roger | 8h | 8h |
| 58 | 1.1.3.1.6 | Elaborar Formato de Aceptacion de Entregables |  | 2d | 2015-09-12 A | 2015-09-14 A | 57 | 100% |  |  |  |  | Roger | 16h | 16h |
| 59 | 1.1.3.1.7 | Elaborar Documento Gestion de Procesos PP-PMC |  | 6d | 2015-09-14 A | 2015-09-19 A | 58 | 100% |  |  |  |  | Edwar; Roger | 96h | 96h |
| 60 | 1.1.3.1.8 | Traspaso de Informacion |  | 1d | 2015-09-21 A | 2015-09-21 A |  | 100% |  |  |  | start no earlier than 2015-09-21 | Edwar | 8h | 8h |

| ID | WBS | Task | Duration | Start | Finish | Total slack |
| --- | --- | --- | --- | --- | --- | --- |
| 61 | 1.1.3.2 | **Desarrollo del Area de Proceso REQM** | 10d | 2015-09-29 | 2015-10-10 |  |
| 62 | 1.1.3.2.1 | Elaborar Formato Acta de Reunion con Cliente | 1d? | 2015-09-29 | 2015-09-29 | 8.88d |
| 63 | 1.1.3.2.2 | Elaborar Formato de Solicitud a Cambios a Requerimientos | 1d? | 2015-09-29 | 2015-09-29 | 8.88d |
| 64 | 1.1.3.2.3 | Elaborar Matriz de Trazabilidad de Requerimientos | 1d? | 2015-09-29 | 2015-09-29 | 8.88d |
| 65 | 1.1.3.2.4 | Elaborar Formato de Registro de Cambios a Requerimientos | 1d? | 2015-09-29 | 2015-09-29 | 8.88d |
| 66 | 1.1.3.2.5 | Elaborar Documento Gestion de Requerimientos | 1d? | 2015-09-29 | 2015-09-29 | 8.88d |
| 67 | 1.1.3.2.6 | Traspaso de Informacion | 1d? | 2015-09-29 | 2015-09-29 | 8.88d |
| 68 | 1.1.3.3 | **Desarrollo del Area de Proceso PPQA** | 5d | 2015-09-29 | 2015-10-03 |  |
| 69 | 1.1.3.3.1 | Elaborar Matriz Seguimiento Proyectos Internos PQA | 1d? | 2015-09-29 | 2015-09-29 | 3.88d |
| 70 | 1.1.3.3.2 | Elaborar Metricas del Proyecto | 1d? | 2015-09-29 | 2015-09-29 | 3.88d |
| 71 | 1.1.3.3.3 | Elaborar Tablero de Metricas de Servicio | 1d? | 2015-09-29 | 2015-09-29 | 3.88d |
| 72 | 1.1.3.3.4 | Elaborar Tablero de Metricas de la Coordinacion | 1d? | 2015-09-29 | 2015-09-29 | 3.88d |
| 73 | 1.1.3.3.5 | Elaborar Documento de Proceso de Aseguramiento de la Calidad | 1d? | 2015-09-29 | 2015-09-29 | 3.88d |
| 74 | 1.1.3.3.6 | Traspaso de Informacion | 1d? | 2015-09-29 | 2015-09-29 | 3.88d |
| 75 | 1.1.3.4 | **Desarrollo del Area de Proceso MA** | 13d | 2015-10-16 | 2015-10-30 |  |
| 76 | 1.1.3.4.1 | Elaborar Ficha de Metricas | 1d? | 2015-10-16 | 2015-10-16 | 11.88d |
| 77 | 1.1.3.4.2 | Elaborar Documento Volatilidad de Requirimientos | 1d? | 2015-10-16 | 2015-10-16 | 11.88d |
| 78 | 1.1.3.4.3 | Elaborar Plantilla Ficha de Indicados en blanco | 1d? | 2015-10-16 | 2015-10-16 | 11.88d |
| 79 | 1.1.3.4.4 | Elaborar Plantilla Ficha Indicador Instructivo | 1d? | 2015-10-16 | 2015-10-16 | 11.88d |
| 80 | 1.1.3.4.5 | Elaborar Documento de Proceso de Medidion MA | 1d? | 2015-10-16 | 2015-10-16 | 11.88d |
| 81 | 1.1.3.4.6 | Traspaso de Informacion | 1d? | 2015-10-16 | 2015-10-16 | 11.88d |
| 82 | 1.1.3.5 | **Desarrollo del Area de Proceso GC** | 15d | 2015-11-03 | 2015-11-19 |  |
| 83 | 1.1.3.5.1 | Elaborar Registro de Items de Configuracion | 1d? | 2015-11-03 | 2015-11-03 | 13.88d |
| 84 | 1.1.3.5.2 | Elaborar Formato de Solicitud de Accesos | 1d? | 2015-11-03 | 2015-11-03 | 13.88d |
| 85 | 1.1.3.5.3 | Elaborar Documento de Proceso de Gestion de Configuracion | 1d? | 2015-11-03 | 2015-11-03 | 13.88d |
| 86 | 1.1.3.5.4 | Elaborar Metrica e Indice de Cambios a Items de Configuracion | 1d? | 2015-11-03 | 2015-11-03 | 13.88d |
| 87 | 1.1.3.5.5 | Traspaso de Informacion | 1d? | 2015-11-03 | 2015-11-03 | 13.88d |

| ID | WBS | Task | Duration | Start | Finish | Predecessors | Total slack | Free slack | Constraint | Resources | Work |
| --- | --- | --- | --- | --- | --- | --- | --- | --- | --- | --- | --- |
| 88 | 1.1.3.6 | **Aseguramiento de Calidad MES 1** | 7d | 2015-09-29 | 2015-10-06 |  |  |  |  |  | 24h |
| 89 | 1.1.3.6.1 | Preparar las actividades de QA | 0.5d | 2015-09-29 | 2015-09-29 |  | 4.88d | 0d |  | Julio | 4h |
| 90 | 1.1.3.6.2 | Ejecutar la Revisión de QA - Procesos | 0.5d | 2015-09-29 | 2015-09-29 | 89 | 4.88d | 0d |  | Julio | 4h |
| 91 | 1.1.3.6.3 | Levantar la No Conformidad | 0.5d | 2015-09-30 | 2015-09-30 | 90 | 4.88d | 0d |  | Julio | 4h |
| 92 | 1.1.3.6.4 | Elaborar e Informar las actividades de QA a la Gerencia del Servicio | 0.5d | 2015-09-30 | 2015-09-30 | 91 | 4.88d |  |  | Julio | 4h |
| 93 | 1.1.3.6.5 | Traspaso de Informacion | 1d? | 2015-09-29 | 2015-09-29 |  | 5.88d |  |  | Edwar | 8h |
| 94 | 1.1.3.7 | **Aseguramiento de Calidad MES 2** | 9d | 2015-10-13 | 2015-10-22 |  |  |  |  |  |  |
| 95 | 1.1.3.7.1 | Preparar las actividades de QA | 0.5d | 2015-10-13 | 2015-10-13 |  | 6.88d | 0d |  |  |  |
| 96 | 1.1.3.7.2 | Ejecutar la Revisión de QA - Procesos | 0.5d | 2015-10-13 | 2015-10-13 | 95 | 6.88d | 0d |  |  |  |
| 97 | 1.1.3.7.3 | Levantar la No Conformidad | 0.5d | 2015-10-14 | 2015-10-14 | 96 | 6.88d | 0d |  |  |  |
| 98 | 1.1.3.7.4 | Elaborar e Informar las actividades de QA a la Gerencia del Servicio | 0.5d | 2015-10-14 | 2015-10-14 | 97 | 6.88d |  |  |  |  |
| 99 | 1.1.3.7.5 | Traspaso de Informacion | 1d? | 2015-10-13 | 2015-10-13 |  | 7.88d |  |  |  |  |
| 100 | 1.1.3.8 | **Aseguramiento de Calidad MES 3** | 9d | 2015-11-10 | 2015-11-19 |  |  |  |  |  |  |
| 101 | 1.1.3.8.1 | Preparar las actividades de QA | 0.5d | 2015-11-10 | 2015-11-10 |  | 6.88d | 0d |  |  |  |
| 102 | 1.1.3.8.2 | Ejecutar la Revisión de QA - Procesos | 0.5d | 2015-11-10 | 2015-11-10 | 101 | 6.88d | 0d |  |  |  |
| 103 | 1.1.3.8.3 | Levantar la No Conformidad | 0.5d | 2015-11-11 | 2015-11-11 | 102 | 6.88d | 0d |  |  |  |
| 104 | 1.1.3.8.4 | Elaborar e Informar las actividades de QA a la Gerencia del Servicio | 0.5d | 2015-11-11 | 2015-11-11 | 103 | 6.88d |  |  |  |  |
| 105 | 1.1.3.8.5 | Traspaso de Informacion | 1d? | 2015-11-10 | 2015-11-10 |  | 7.88d |  |  |  |  |
| 106 | 1.1.4 | **Cierre** | 2d | 2015-11-18 | 2015-11-19 |  |  |  |  | Edwar; Julio; Profesor; Roger | 64h |
| 107 | 1.1.4.1 | **Cierre de Proyecto** | 1d? | 2015-11-18 | 2015-11-18 |  |  |  |  |  |  |
| 108 | 1.1.4.1.1 | Revisión de Entregables del Proyecto | 0.5d | 2015-11-18 | 2015-11-18 |  | 0.38d |  |  |  |  |
| 109 | 1.1.4.1.2 | Elaboracion del Acta de Aceptacion y Cierre del Proyecto | 0.5d | 2015-11-18 | 2015-11-18 |  | 0.38d |  |  |  |  |
| 110 | 1.1.4.1.3 | Traspaso de Informacion | 1d? | 2015-11-18 | 2015-11-18 |  | -0.12d | 0d |  |  |  |
| 111 | 1.1.4.2 | **Relatorio de Proyecto** | 1d | 2015-11-19 | 2015-11-19 |  |  |  |  |  |  |
| 112 | 1.1.4.2.1 | Elaborar relatorio de Proyecto | 1d | 2015-11-19 | 2015-11-19 |  | -0.12d | 0d |  |  |  |
| 113 | 1.1.4.2.2 | Revision y ajustes de relatorio por el equipo del Proyecto | 0.5d | 2015-11-19 | 2015-11-19 |  | -0.12d | 0d | start no earlier than 2015-11-19 |  |  |
| 114 | 1.1.4.2.3 | Revision de relatorio | 0.5d | 2015-11-19 | 2015-11-19 | 113 | -0.12d | 0d |  |  |  |
| 115 | 1.1.4.2.4 | Traspaso de Informacion | 1d? | 2015-11-19 | 2015-11-19 |  | -0.12d | 0d |  |  |  |

| ID | WBS | Task | Duration | Start | Finish | Predecessors | Complete | Remaining | Total slack | Free slack | Constraint | Resources | Work | Actual work |
| --- | --- | --- | --- | --- | --- | --- | --- | --- | --- | --- | --- | --- | --- | --- |
| 116 | 1.2 | **Proceso de Ingenieria** | 44.88d | 2015-09-14 A | 2015-11-05 |  | 4% | 42.96d | 12.12d |  |  |  | 4044h | 216h |
| 117 | 1.2.1 | **Software UTP-GPS-ALARM** | 45d | 2015-09-14 A | 2015-11-05 |  | 4% | 43.08d |  |  |  | Edwar; Julio; Roger | 4044h | 216h |
| 118 | 1.2.1.1 | **Analisis** | 17.88d | 2015-09-14 A | 2015-10-03 |  | 14% | 15.37d |  |  |  | Edwar; Julio; Roger | 2964h | 216h |
| 119 | 1.2.1.1.1 | Elaborar Documento con Diseño Actual | 1d | 2015-09-14 | 2015-09-14 |  |  |  | 15.88d | 0d | start no earlier than 2015-09-14 | Edwar; Roger | 16h |  |
| 120 | 1.2.1.1.2 | Elaborar Requerimientos para c/modulo | 9.88d | 2015-09-14 | 2015-09-24 |  |  |  | 47.12d |  | finish no earlier than 2015-09-24 | Edwar; Roger | 158h |  |
| 121 | 1.2.1.1.3 | Revision de Documento de Diseño Actual | 1d | 2015-09-15 | 2015-09-15 | 119 |  |  | 15.88d |  |  | Edwar | 8h |  |
| 122 | 1.2.1.1.4 | Traspaso de Informacion | 1d | 2015-09-15 | 2015-09-15 |  |  |  | 55d |  | start no earlier than 2015-09-15 | Edwar | 8h |  |
| 123 | 1.2.1.1.5 | **Casos de Uso** | 17.88d | 2015-09-14 A | 2015-10-03 |  | 20% | 14.3d |  |  |  | Edwar; Julio; Roger | 2337h | 216h |
| 124 | 1.2.1.1.5.1 | **Caso de Uso Modulo 1** | 17.88d | 2015-09-14 A | 2015-10-03 |  | 38% | 11.17d |  |  |  | Edwar; Julio; Roger | 533h | 24h |
| 125 | 1.2.1.1.5.1.1 | Entender la problemática actual | 1d | 2015-09-14 A | 2015-09-14 A |  | 100% |  |  |  |  | Roger | 8h | 8h |
| 126 | 1.2.1.1.5.1.2 | Elaborar Casos de Uso | 1d | 2015-09-15 A | 2015-09-15 A | 125 | 100% |  |  |  |  | Roger | 8h | 8h |
| 127 | 1.2.1.1.5.1.3 | Actualizar Glosario de Terminos | 0.5d | 2015-09-16 A | 2015-09-16 A | 126 | 100% |  |  |  |  | Roger | 4h | 4h |
| 128 | 1.2.1.1.5.1.4 | Elaborar Caso de Uso Mejorado | 0.5d | 2015-09-16 A | 2015-09-16 A | 127 | 100% |  |  |  |  | Roger | 4h | 4h |
| 129 | 1.2.1.1.5.1.5 | **Aseguramiento de Calidad del Caso de Uso Modulo 1** | 5d | 2015-09-29 | 2015-10-03 |  |  |  |  |  |  | Julio | 80h |  |
| 130 | 1.2.1.1.5.1.5.1 | Preparar las actividades de QA | 1d | 2015-09-29 | 2015-09-30 |  |  |  | 42.12d |  | finish no earlier than 2015-09-30 | Julio | 8h |  |
| 131 | 1.2.1.1.5.1.5.2 | Ejecutar la Revisión de QA - Procesos | 1d | 2015-09-29 | 2015-09-30 |  |  |  | 42.12d |  | finish no earlier than 2015-09-30 | Julio | 8h |  |
| 132 | 1.2.1.1.5.1.5.3 | Levantar la No Conformidad | 1d | 2015-09-30 | 2015-10-01 |  |  |  | 41.12d |  | finish no earlier than 2015-10-01 | Julio | 8h |  |
| 133 | 1.2.1.1.5.1.5.4 | Elaborar el informe de Revision de QA para la Gerencia del Servicio | 1d | 2015-09-29 | 2015-09-29 |  |  |  | 3.88d |  |  | Julio | 8h |  |
| 134 | 1.2.1.1.5.1.5.5 | Traspaso de Informacion | 1d | 2015-09-29 | 2015-09-29 |  |  |  | 3.88d |  |  | Edwar | 8h |  |
| 135 | 1.2.1.1.5.2 | **Caso de Uso Modulo 2** | 15d | 2015-09-17 A | 2015-10-03 |  | 44% | 8.33d |  |  |  | Edwar; Julio; Roger | 471h | 192h |
| 136 | 1.2.1.1.5.2.1 | Entender la problemática actual | 1d | 2015-09-17 A | 2015-09-17 A |  | 100% |  |  |  |  | Roger | 8h | 8h |
| 137 | 1.2.1.1.5.2.2 | Elaborar Casos de Uso | 1d | 2015-09-18 A | 2015-09-18 A | 136 | 100% |  |  |  |  | Roger | 8h | 8h |
| 138 | 1.2.1.1.5.2.3 | Actualizar Glosario de Terminos | 1d | 2015-09-19 A | 2015-09-19 A | 139 | 100% |  |  |  |  | Roger | 8h | 8h |
| 139 | 1.2.1.1.5.2.4 | Elaborar Caso de Uso Mejorado | 1d | 2015-09-19 A | 2015-09-19 A | 137 | 100% |  |  |  |  | Roger | 8h | 8h |

| ID | WBS | Task | Duration | Start | Finish | Predecessors | Total slack | Free slack | Constraint | Resources | Work |
| --- | --- | --- | --- | --- | --- | --- | --- | --- | --- | --- | --- |
| 140 | 1.2.1.1.5.2.5 | **Aseguramiento de Calidad del Caso de Uso Modulo 2** | 5d | 2015-09-29 | 2015-10-03 |  |  |  |  | Julio | 80h |
| 141 | 1.2.1.1.5.2.5.1 | Preparar las actividades de QA | 1d | 2015-09-29 | 2015-09-29 |  | 3.88d |  |  | Julio | 8h |
| 142 | 1.2.1.1.5.2.5.2 | Ejecutar la Revisión de QA - Procesos | 1d | 2015-09-29 | 2015-09-29 |  | 3.88d |  |  | Julio | 8h |
| 143 | 1.2.1.1.5.2.5.3 | Levantar la No Conformidad | 1d | 2015-09-29 | 2015-09-29 |  | 3.88d |  |  | Julio | 8h |
| 144 | 1.2.1.1.5.2.5.4 | Elaborar el informe de Revision de QA para la Gerencia del Servicio | 1d | 2015-09-29 | 2015-09-29 |  | 3.88d |  |  | Julio | 8h |
| 145 | 1.2.1.1.5.2.5.5 | Traspaso de Informacion | 1d | 2015-09-29 | 2015-09-29 |  | 3.88d |  |  | Edwar | 8h |
| 146 | 1.2.1.1.5.3 | **Caso de Uso Modulo 3** | 13d | 2015-09-19 | 2015-10-03 |  |  |  |  | Edwar; Julio; Roger | 504h |
| 147 | 1.2.1.1.5.3.1 | Entender la problemática actual | 1d | 2015-09-19 | 2015-09-19 |  | 11.88d |  |  | Roger | 8h |
| 148 | 1.2.1.1.5.3.2 | Elaborar Casos de Uso | 1d | 2015-09-19 | 2015-09-19 |  | 9.88d | 0d | start no earlier than 2015-09-19 | Roger | 8h |
| 149 | 1.2.1.1.5.3.3 | Actualizar Glosario de Terminos | 1d | 2015-09-21 | 2015-09-21 | 148 | 9.88d | 0d |  | Roger | 8h |
| 150 | 1.2.1.1.5.3.4 | Elaborar Caso de Uso Mejorado | 1d | 2015-09-22 | 2015-09-22 | 149 | 9.88d |  |  | Roger | 8h |
| 151 | 1.2.1.1.5.3.5 | **Aseguramiento de Calidad del Caso de Uso Modulo 3** | 5d | 2015-09-29 | 2015-10-03 |  |  |  |  | Edwar; Julio; Roger | 160h |
| 152 | 1.2.1.1.5.3.5.1 | Preparar las actividades de QA | 1d? | 2015-09-29 | 2015-09-29 |  | 3.88d |  |  | Julio | 8h |
| 153 | 1.2.1.1.5.3.5.2 | Ejecutar la Revisión de QA - Procesos | 1d? | 2015-09-29 | 2015-09-29 |  | 3.88d |  |  | Julio | 8h |
| 154 | 1.2.1.1.5.3.5.3 | Levantar la No Conformidad | 1d? | 2015-09-29 | 2015-09-29 |  | 3.88d |  |  | Julio | 8h |
| 155 | 1.2.1.1.5.3.5.4 | Elaborar el informe de Revision de QA para la Gerencia del Servicio | 1d? | 2015-09-29 | 2015-09-29 |  | 3.88d |  |  | Julio | 8h |
| 156 | 1.2.1.1.5.3.5.5 | Traspaso de Informacion | 1d? | 2015-09-29 | 2015-09-29 |  | 3.88d |  |  | Edwar | 8h |
| 157 | 1.2.1.1.5.4 | **Caso de Uso Modulo 4** | 12d | 2015-09-21 | 2015-10-03 |  |  |  |  | Edwar; Julio; Roger | 400h |
| 158 | 1.2.1.1.5.4.1 | Entender la problemática actual | 1d? | 2015-09-21 | 2015-09-21 |  | 10.88d |  |  | Roger | 8h |
| 159 | 1.2.1.1.5.4.2 | Elaborar Casos de Uso | 1d? | 2015-09-21 | 2015-09-21 |  | 10.88d |  |  | Roger | 8h |
| 160 | 1.2.1.1.5.4.3 | Actualizar Glosario de Terminos | 1d? | 2015-09-21 | 2015-09-21 |  | 10.88d |  |  | Roger | 8h |
| 161 | 1.2.1.1.5.4.4 | Elaborar Caso de Uso Mejorado | 1d? | 2015-09-21 | 2015-09-21 |  | 10.88d |  |  | Roger | 8h |
| 162 | 1.2.1.1.5.4.5 | **Aseguramiento de Calidad del Caso de Uso Modulo 4** | 5d | 2015-09-29 | 2015-10-03 |  |  |  |  | Julio | 80h |
| 163 | 1.2.1.1.5.4.5.1 | Preparar las actividades de QA | 1d? | 2015-09-29 | 2015-09-29 |  | 3.88d |  |  | Julio | 8h |
| 164 | 1.2.1.1.5.4.5.2 | Ejecutar la Revisión de QA - Procesos | 1d? | 2015-09-29 | 2015-09-29 |  | 3.88d |  |  | Julio | 8h |
| 165 | 1.2.1.1.5.4.5.3 | Levantar la No Conformidad | 1d? | 2015-09-29 | 2015-09-29 |  | 3.88d |  |  | Julio | 8h |
| 166 | 1.2.1.1.5.4.5.4 | Elaborar el informe de Revision de QA para la Gerencia del Servicio | 1d? | 2015-09-29 | 2015-09-29 |  | 3.88d |  |  | Julio | 8h |
| 167 | 1.2.1.1.5.4.5.5 | Traspaso de Informacion | 1d? | 2015-09-29 | 2015-09-29 |  | 3.88d |  |  | Edwar | 8h |
| 168 | 1.2.1.1.6 | Actualizar Matriz de Trazabilidad de Requerimientos | 1d? | 2015-09-14 | 2015-09-14 |  | 16.88d |  |  |  |  |
| 169 | 1.2.1.1.7 | Traspaso de Informacion | 1d? | 2015-09-14 | 2015-09-14 |  | 16.88d |  |  | Edwar | 8h |

| ID | WBS | Task | Duration | Start | Finish | Total slack |
| --- | --- | --- | --- | --- | --- | --- |
| 170 | 1.2.1.2 | **Diseño** | 1d | 2015-09-14 | 2015-09-14 | 0d |
| 171 | 1.2.1.2.1 | **Documento de Diseño** | 1d | 2015-09-14 | 2015-09-14 |  |
| 172 | 1.2.1.2.1.1 | Analisis de la Informacion ,elaborar Documento de Diseño Tecnico | 1d | 2015-09-14 | 2015-09-14 | 0d |
| 173 | 1.2.1.2.1.2 | Revision de Documento de Diseño Mejorado | 1d | 2015-09-14 | 2015-09-14 | 0d |
| 174 | 1.2.1.2.1.3 | Traspaso de Informacion | 1d | 2015-09-14 | 2015-09-14 | 0d |
| 175 | 1.2.1.2.1.4 | **Aseguramiento de la calidad** | 1d | 2015-09-14 | 2015-09-14 |  |
| 176 | 1.2.1.2.1.4.1 | Preparar las actividades de QA. | 1d? | 2015-09-14 | 2015-09-14 | 0d |
| 177 | 1.2.1.2.1.4.2 | Ejecutar la Revisión de QA | 1d? | 2015-09-14 | 2015-09-14 | 0d |
| 178 | 1.2.1.2.1.4.3 | Ejecutar la Revisión de procesos | 1d? | 2015-09-14 | 2015-09-14 | 0d |
| 179 | 1.2.1.2.1.4.4 | Levantar la No Conformidad | 1d? | 2015-09-14 | 2015-09-14 | 0d |
| 180 | 1.2.1.2.1.4.5 | Realizar el seguimiento | 1d? | 2015-09-14 | 2015-09-14 | 0d |
| 181 | 1.2.1.2.1.4.6 | Elaborar el informe de Revision de QA para la Gerencia del Servicio | 1d? | 2015-09-14 | 2015-09-14 | 0d |
| 182 | 1.2.1.2.1.4.7 | Traspaso de Informacion | 1d? | 2015-09-14 | 2015-09-14 | 0d |
| 183 | 1.2.1.2.2 | Actualizar Matriz de Trazabilidad de Requerimientos | 1d | 2015-09-14 | 2015-09-14 | 43.88d |
| 184 | 1.2.1.2.3 | Traspaso de Informacion | 1d | 2015-09-14 | 2015-09-14 | 43.88d |
| 185 | 1.2.1.3 | **Construccion** | 1d? | 2015-09-14 | 2015-09-14 | 43.88d |
| 186 | 1.2.1.3.1 | **Inducción de personal** | 1d? | 2015-09-14 | 2015-09-14 | 43.88d |
| 187 | 1.2.1.3.1.1 | Establecer personal para inducción | 1d? | 2015-09-14 | 2015-09-14 | 43.88d |
| 188 | 1.2.1.3.1.2 | Realizar inducción al personal | 1d? | 2015-09-14 | 2015-09-14 | 43.88d |
| 189 | 1.2.1.3.1.3 | Verificar proceso de inducción | 1d? | 2015-09-14 | 2015-09-14 | 43.88d |
| 190 | 1.2.1.3.1.4 | Elaborar Certificado de Induccion de Personal | 1d? | 2015-09-14 | 2015-09-14 | 43.88d |
| 191 | 1.2.1.3.1.5 | Traspaso de Informacion | 1d? | 2015-09-14 | 2015-09-14 | 43.88d |
| 192 | 1.2.1.3.1.6 | Pasar a area de Desarrollo a Personal Capacitado | 1d? | 2015-09-14 | 2015-09-14 | 43.88d |
| 193 | 1.2.1.3.2 | **Modulo de Instalacion de APK** | 1d? | 2015-09-14 | 2015-09-14 | 43.88d |
| 194 | 1.2.1.3.2.1 | **Construccion de Modulo** | 1d? | 2015-09-14 | 2015-09-14 | 43.88d |
| 195 | 1.2.1.3.2.1.1 | Asignar permisos de usuario para la aplicación | 1d? | 2015-09-14 | 2015-09-14 | 43.88d |
| 196 | 1.2.1.3.2.1.2 | Vincular usuario a cuenta | 1d? | 2015-09-14 | 2015-09-14 | 43.88d |
| 197 | 1.2.1.3.2.1.3 | Confirmacion y aceptar condiciones y terminos de uso | 1d? | 2015-09-14 | 2015-09-14 | 43.88d |
| 198 | 1.2.1.3.2.1.4 | Traspaso de Informacion | 1d? | 2015-09-14 | 2015-09-14 | 43.88d |

| ID | WBS | Task | Duration | Start | Finish | Total slack |
| --- | --- | --- | --- | --- | --- | --- |
| 199 | 1.2.1.3.2.2 | **Pruebas de Modulo** | 1d? | 2015-09-14 | 2015-09-14 | 43.88d |
| 200 | 1.2.1.3.2.2.1 | Realizar Pruebas del Modulo | 1d? | 2015-09-14 | 2015-09-14 | 43.88d |
| 201 | 1.2.1.3.2.2.2 | Elaborar Informe de Pruebas | 1d? | 2015-09-14 | 2015-09-14 | 43.88d |
| 202 | 1.2.1.3.2.2.3 | Traspaso de Informacion | 1d? | 2015-09-14 | 2015-09-14 | 43.88d |
| 203 | 1.2.1.3.2.3 | **Guias de Modulo** | 1d? | 2015-09-14 | 2015-09-14 | 43.88d |
| 204 | 1.2.1.3.2.3.1 | Elaborar Manual de Usuario del Modulo | 1d? | 2015-09-14 | 2015-09-14 | 43.88d |
| 205 | 1.2.1.3.2.3.2 | Traspaso de Informacion | 1d? | 2015-09-14 | 2015-09-14 | 43.88d |
| 206 | 1.2.1.3.2.4 | **Aseguramiento de Calidad del Modulo Instalacion APK** | 1d? | 2015-09-14 | 2015-09-14 | 43.88d |
| 207 | 1.2.1.3.2.4.1 | Preparar las actividades de QA | 1d? | 2015-09-14 | 2015-09-14 | 43.88d |
| 208 | 1.2.1.3.2.4.2 | Ejecutar la Revisión de QA - Procesos | 1d? | 2015-09-14 | 2015-09-14 | 43.88d |
| 209 | 1.2.1.3.2.4.3 | Levantar la No Conformidad | 1d? | 2015-09-14 | 2015-09-14 | 43.88d |
| 210 | 1.2.1.3.2.4.4 | Elaborar el informe de Revision de QA para la Gerencia del Servicio | 1d? | 2015-09-14 | 2015-09-14 | 43.88d |
| 211 | 1.2.1.3.2.4.5 | Traspaso de Informacion | 1d? | 2015-09-14 | 2015-09-14 | 43.88d |
| 212 | 1.2.1.3.3 | **Modulo de Ingreso de Coordenadas y Destino** | 1d? | 2015-09-14 | 2015-09-14 | 43.88d |
| 213 | 1.2.1.3.3.1 | **Construccion de Modulo** | 1d? | 2015-09-14 | 2015-09-14 | 43.88d |
| 214 | 1.2.1.3.3.1.1 | Ubicación Actual | 1d? | 2015-09-14 | 2015-09-14 | 43.88d |
| 215 | 1.2.1.3.3.1.2 | Asignar Destino | 1d? | 2015-09-14 | 2015-09-14 | 43.88d |
| 216 | 1.2.1.3.3.1.3 | Cálculo de distancia hasta el destino | 1d? | 2015-09-14 | 2015-09-14 | 43.88d |
| 217 | 1.2.1.3.3.1.4 | Establecer Rango de Alarma | 1d? | 2015-09-14 | 2015-09-14 | 43.88d |
| 218 | 1.2.1.3.3.1.5 | Establecer tipo de Alarma ,volumen , vibrador | 1d? | 2015-09-14 | 2015-09-14 | 43.88d |
| 219 | 1.2.1.3.3.1.6 | Traspaso de Informacion | 1d? | 2015-09-14 | 2015-09-14 | 43.88d |
| 220 | 1.2.1.3.3.2 | **Pruebas de Modulo** | 1d? | 2015-09-14 | 2015-09-14 | 43.88d |
| 221 | 1.2.1.3.3.2.1 | Realizar Pruebas del Modulo | 1d? | 2015-09-14 | 2015-09-14 | 43.88d |
| 222 | 1.2.1.3.3.2.2 | Elaborar Informe de Pruebas | 1d? | 2015-09-14 | 2015-09-14 | 43.88d |
| 223 | 1.2.1.3.3.2.3 | Traspaso de Informacion | 1d? | 2015-09-14 | 2015-09-14 | 43.88d |

| ID | WBS | Task | Duration | Start | Finish | Total slack |
| --- | --- | --- | --- | --- | --- | --- |
| 224 | 1.2.1.3.3.3 | **Guias de Modulo** | 1d? | 2015-09-14 | 2015-09-14 | 43.88d |
| 225 | 1.2.1.3.3.3.1 | Elaborar Manual de Usuario del Modulo | 1d? | 2015-09-14 | 2015-09-14 | 43.88d |
| 226 | 1.2.1.3.3.3.2 | Traspaso de Informacion | 1d? | 2015-09-14 | 2015-09-14 | 43.88d |
| 227 | 1.2.1.3.3.4 | **Aseguramiento de Calidad del Modulo Ingreso Coordenadas y Destino** | 1d? | 2015-09-14 | 2015-09-14 | 43.88d |
| 228 | 1.2.1.3.3.4.1 | Preparar las actividades de QA | 1d? | 2015-09-14 | 2015-09-14 | 43.88d |
| 229 | 1.2.1.3.3.4.2 | Ejecutar la Revisión de QA - Procesos | 1d? | 2015-09-14 | 2015-09-14 | 43.88d |
| 230 | 1.2.1.3.3.4.3 | Levantar la No Conformidad | 1d? | 2015-09-14 | 2015-09-14 | 43.88d |
| 231 | 1.2.1.3.3.4.4 | Elaborar el informe de Revision de QA para la Gerencia del Servicio | 1d? | 2015-09-14 | 2015-09-14 | 43.88d |
| 232 | 1.2.1.3.3.4.5 | Traspaso de Informacion | 1d? | 2015-09-14 | 2015-09-14 | 43.88d |
| 233 | 1.2.1.3.4 | **Modulo de Rutas** | 1d? | 2015-09-14 | 2015-09-14 | 43.88d |
| 234 | 1.2.1.3.4.1 | **Construccion de Modulo** | 1d? | 2015-09-14 | 2015-09-14 | 43.88d |
| 235 | 1.2.1.3.4.1.1 | Mostrar lista de ultimas rutas usadas | 1d? | 2015-09-14 | 2015-09-14 | 43.88d |
| 236 | 1.2.1.3.4.1.2 | Guardar Historial de Rutas | 1d? | 2015-09-14 | 2015-09-14 | 43.88d |
| 237 | 1.2.1.3.4.1.3 | Guardar Rutas Favoritas | 1d? | 2015-09-14 | 2015-09-14 | 43.88d |
| 238 | 1.2.1.3.4.1.4 | Traspaso de Informacion | 1d? | 2015-09-14 | 2015-09-14 | 43.88d |
| 239 | 1.2.1.3.4.2 | **Pruebas de Modulo** | 1d? | 2015-09-14 | 2015-09-14 | 43.88d |
| 240 | 1.2.1.3.4.2.1 | Realizar Pruebas del Modulo | 1d? | 2015-09-14 | 2015-09-14 | 43.88d |
| 241 | 1.2.1.3.4.2.2 | Elaborar Informe de Pruebas | 1d? | 2015-09-14 | 2015-09-14 | 43.88d |
| 242 | 1.2.1.3.4.2.3 | Traspaso de Informacion | 1d? | 2015-09-14 | 2015-09-14 | 43.88d |
| 243 | 1.2.1.3.4.3 | **Guias de Modulo** | 1d? | 2015-09-14 | 2015-09-14 | 43.88d |
| 244 | 1.2.1.3.4.3.1 | Elaborar Manual de Usuario del Modulo | 1d? | 2015-09-14 | 2015-09-14 | 43.88d |
| 245 | 1.2.1.3.4.3.2 | Traspaso de Informacion | 1d? | 2015-09-14 | 2015-09-14 | 43.88d |
| 246 | 1.2.1.3.4.4 | **Aseguramiento de Calidad del Modulo Rutas** | 1d? | 2015-09-14 | 2015-09-14 | 43.88d |
| 247 | 1.2.1.3.4.4.1 | Preparar las actividades de QA | 1d? | 2015-09-14 | 2015-09-14 | 43.88d |
| 248 | 1.2.1.3.4.4.2 | Ejecutar la Revisión de QA - Procesos | 1d? | 2015-09-14 | 2015-09-14 | 43.88d |
| 249 | 1.2.1.3.4.4.3 | Levantar la No Conformidad | 1d? | 2015-09-14 | 2015-09-14 | 43.88d |
| 250 | 1.2.1.3.4.4.4 | Elaborar el informe de Revision de QA para la Gerencia del Servicio | 1d? | 2015-09-14 | 2015-09-14 | 43.88d |
| 251 | 1.2.1.3.4.4.5 | Traspaso de Informacion | 1d? | 2015-09-14 | 2015-09-14 | 43.88d |

| ID | WBS | Task | Duration | Start | Finish | Total slack |
| --- | --- | --- | --- | --- | --- | --- |
| 252 | 1.2.1.3.5 | **Modulo de Seguridad** | 1d? | 2015-09-14 | 2015-09-14 | 43.88d |
| 253 | 1.2.1.3.5.1 | **Construccion de Modulo** | 1d? | 2015-09-14 | 2015-09-14 | 43.88d |
| 254 | 1.2.1.3.5.1.1 | Iniciar la aplicación al iniciar el dispositivo siempre que el usuario lo desee. | 1d? | 2015-09-14 | 2015-09-14 | 43.88d |
| 255 | 1.2.1.3.5.1.2 | Comprobaciones de seguridad adicionales realizadas con el muestreo de licencia. | 1d? | 2015-09-14 | 2015-09-14 | 43.88d |
| 256 | 1.2.1.3.5.1.3 | Control de piratería de la aplicación | 1d? | 2015-09-14 | 2015-09-14 | 43.88d |
| 257 | 1.2.1.3.5.2 | **Pruebas de Modulo** | 1d? | 2015-09-14 | 2015-09-14 | 43.88d |
| 258 | 1.2.1.3.5.2.1 | Realizar Pruebas del Modulo | 1d? | 2015-09-14 | 2015-09-14 | 43.88d |
| 259 | 1.2.1.3.5.2.2 | Elaborar Informe de Pruebas | 1d? | 2015-09-14 | 2015-09-14 | 43.88d |
| 260 | 1.2.1.3.5.2.3 | Traspaso de Informacion | 1d? | 2015-09-14 | 2015-09-14 | 43.88d |
| 261 | 1.2.1.3.5.3 | **Guias de Modulo** | 1d? | 2015-09-14 | 2015-09-14 | 43.88d |
| 262 | 1.2.1.3.5.3.1 | Elaborar Manual de Usuario del Modulo | 1d? | 2015-09-14 | 2015-09-14 | 43.88d |
| 263 | 1.2.1.3.5.3.2 | Traspaso de Informacion | 1d? | 2015-09-14 | 2015-09-14 | 43.88d |
| 264 | 1.2.1.3.5.4 | **Aseguramiento de Calidad del Modulo Seguridad** | 1d? | 2015-09-14 | 2015-09-14 | 43.88d |
| 265 | 1.2.1.3.5.4.1 | Preparar las actividades de QA | 1d? | 2015-09-14 | 2015-09-14 | 43.88d |
| 266 | 1.2.1.3.5.4.2 | Ejecutar la Revisión de QA - Procesos | 1d? | 2015-09-14 | 2015-09-14 | 43.88d |
| 267 | 1.2.1.3.5.4.3 | Levantar la No Conformidad | 1d? | 2015-09-14 | 2015-09-14 | 43.88d |
| 268 | 1.2.1.3.5.4.4 | Elaborar el informe de Revision de QA para la Gerencia del Servicio | 1d? | 2015-09-14 | 2015-09-14 | 43.88d |
| 269 | 1.2.1.3.5.4.5 | Traspaso de Informacion | 1d? | 2015-09-14 | 2015-09-14 | 43.88d |
| 270 | 1.2.1.3.6 | Actualizar Matriz de Trazabilidad de Requerimientos | 1d | 2015-09-14 | 2015-09-14 | 43.88d |
| 271 | 1.2.1.3.7 | Traspaso de Informacion | 1d | 2015-09-14 | 2015-09-14 | 43.88d |
| 272 | 1.2.1.4 | **Pruebas** | 1d? | 2015-09-14 | 2015-09-14 | 43.88d |
| 273 | 1.2.1.4.1 | **Pruebas Unitarias** | 1d? | 2015-09-14 | 2015-09-14 | 43.88d |
| 274 | 1.2.1.4.1.1 | **Modulo de Instalacion de APK** | 1d? | 2015-09-14 | 2015-09-14 | 43.88d |
| 275 | 1.2.1.4.1.1.1 | Elaborar Pruebas de Modulo | 1d? | 2015-09-14 | 2015-09-14 | 43.88d |
| 276 | 1.2.1.4.1.1.2 | Elaborar Informe de Prueba | 1d? | 2015-09-14 | 2015-09-14 | 43.88d |
| 277 | 1.2.1.4.1.1.3 | Traspaso de Informacion | 1d? | 2015-09-14 | 2015-09-14 | 43.88d |

| ID | WBS | Task | Duration | Start | Finish | Total slack |
| --- | --- | --- | --- | --- | --- | --- |
| 278 | 1.2.1.4.1.2 | **Modulo de Ingreso de Coordenadas y Destino** | 1d? | 2015-09-14 | 2015-09-14 | 43.88d |
| 279 | 1.2.1.4.1.2.1 | Elaborar Pruebas de Modulo | 1d? | 2015-09-14 | 2015-09-14 | 43.88d |
| 280 | 1.2.1.4.1.2.2 | Elaborar Informe de Prueba | 1d? | 2015-09-14 | 2015-09-14 | 43.88d |
| 281 | 1.2.1.4.1.2.3 | Traspaso de Informacion | 1d? | 2015-09-14 | 2015-09-14 | 43.88d |
| 282 | 1.2.1.4.1.3 | **Modulo de Rutas** | 1d? | 2015-09-14 | 2015-09-14 | 43.88d |
| 283 | 1.2.1.4.1.3.1 | Elaborar Pruebas de Modulo | 1d? | 2015-09-14 | 2015-09-14 | 43.88d |
| 284 | 1.2.1.4.1.3.2 | Elaborar Informe de Prueba | 1d? | 2015-09-14 | 2015-09-14 | 43.88d |
| 285 | 1.2.1.4.1.3.3 | Traspaso de Informacion | 1d? | 2015-09-14 | 2015-09-14 | 43.88d |
| 286 | 1.2.1.4.1.4 | **Modulo de Seguridad** | 1d? | 2015-09-14 | 2015-09-14 | 43.88d |
| 287 | 1.2.1.4.1.4.1 | Elaborar Pruebas de Modulo | 1d? | 2015-09-14 | 2015-09-14 | 43.88d |
| 288 | 1.2.1.4.1.4.2 | Elaborar Informe de Prueba | 1d? | 2015-09-14 | 2015-09-14 | 43.88d |
| 289 | 1.2.1.4.1.4.3 | Traspaso de Informacion | 1d? | 2015-09-14 | 2015-09-14 | 43.88d |
| 290 | 1.2.1.4.2 | **Pruebas de QA para todos los Modulos** | 1d? | 2015-09-14 | 2015-09-14 | 43.88d |
| 291 | 1.2.1.4.2.1 | **Aseguramiento de la calidad** | 1d? | 2015-09-14 | 2015-09-14 | 43.88d |
| 292 | 1.2.1.4.2.1.1 | Preparar las actividades de QA. | 1d? | 2015-09-14 | 2015-09-14 | 43.88d |
| 293 | 1.2.1.4.2.1.2 | Ejecutar la Revisión de QA | 1d? | 2015-09-14 | 2015-09-14 | 43.88d |
| 294 | 1.2.1.4.2.1.3 | Ejecutar la Revisión de procesos | 1d? | 2015-09-14 | 2015-09-14 | 43.88d |
| 295 | 1.2.1.4.2.1.4 | Levantar la No Conformidad | 1d? | 2015-09-14 | 2015-09-14 | 43.88d |
| 296 | 1.2.1.4.2.1.5 | Realizar el seguimiento | 1d? | 2015-09-14 | 2015-09-14 | 43.88d |
| 297 | 1.2.1.4.2.1.6 | Elaborar e Informar las actividades de QA a la Gerencia del Servicio | 1d? | 2015-09-14 | 2015-09-14 | 43.88d |
| 298 | 1.2.1.4.2.1.7 | Traspaso de Informacion | 1d? | 2015-09-14 | 2015-09-14 | 43.88d |
| 299 | 1.2.1.4.3 | **Pruebas de Cliente** | 1d? | 2015-09-14 | 2015-09-14 | 43.88d |
| 300 | 1.2.1.4.3.1 | **Modulo de Instalacion de APK** | 1d? | 2015-09-14 | 2015-09-14 | 43.88d |
| 301 | 1.2.1.4.3.1.1 | Elaborar Pruebas de Modulo | 1d? | 2015-09-14 | 2015-09-14 | 43.88d |
| 302 | 1.2.1.4.3.1.2 | Elaborar Informe de Prueba | 1d? | 2015-09-14 | 2015-09-14 | 43.88d |
| 303 | 1.2.1.4.3.1.3 | Traspaso de Informacion | 1d? | 2015-09-14 | 2015-09-14 | 43.88d |

| ID | WBS | Task | Duration | Start | Finish | Complete | Remaining | Total slack | Resources | Work | Actual work |
| --- | --- | --- | --- | --- | --- | --- | --- | --- | --- | --- | --- |
| 304 | 1.2.1.4.3.2 | **Modulo de Ingreso de Coordenadas y Destino** | 1d? | 2015-09-14 | 2015-09-14 |  |  | 43.88d |  |  |  |
| 305 | 1.2.1.4.3.2.1 | Elaborar Pruebas de Modulo | 1d? | 2015-09-14 | 2015-09-14 |  |  | 43.88d |  |  |  |
| 306 | 1.2.1.4.3.2.2 | Elaborar Informe de Prueba | 1d? | 2015-09-14 | 2015-09-14 |  |  | 43.88d |  |  |  |
| 307 | 1.2.1.4.3.2.3 | Traspaso de Informacion | 1d? | 2015-09-14 | 2015-09-14 |  |  | 43.88d |  |  |  |
| 308 | 1.2.1.4.3.3 | **Modulo de Rutas** | 1d? | 2015-09-14 | 2015-09-14 |  |  | 43.88d |  |  |  |
| 309 | 1.2.1.4.3.3.1 | Elaborar Pruebas de Modulo | 1d? | 2015-09-14 | 2015-09-14 |  |  | 43.88d |  |  |  |
| 310 | 1.2.1.4.3.3.2 | Elaborar Informe de Prueba | 1d? | 2015-09-14 | 2015-09-14 |  |  | 43.88d |  |  |  |
| 311 | 1.2.1.4.3.3.3 | Traspaso de Informacion | 1d? | 2015-09-14 | 2015-09-14 |  |  | 43.88d |  |  |  |
| 312 | 1.2.1.4.3.4 | **Modulo de Seguridad** | 1d? | 2015-09-14 | 2015-09-14 |  |  | 43.88d |  |  |  |
| 313 | 1.2.1.4.3.4.1 | Elaborar Pruebas de Modulo | 1d? | 2015-09-14 | 2015-09-14 |  |  | 43.88d |  |  |  |
| 314 | 1.2.1.4.3.4.2 | Elaborar Informe de Prueba | 1d? | 2015-09-14 | 2015-09-14 |  |  | 43.88d |  |  |  |
| 315 | 1.2.1.4.3.4.3 | Traspaso de Informacion | 1d? | 2015-09-14 | 2015-09-14 |  |  | 43.88d |  |  |  |
| 316 | 1.2.1.4.4 | Elaborar Matriz de Trazabilidad de Requerimientos Final | 1d | 2015-09-14 | 2015-09-14 |  |  | 43.88d |  |  |  |
| 317 | 1.2.1.4.5 | Traspaso de Informacion | 1d | 2015-09-14 | 2015-09-14 |  |  | 43.88d |  |  |  |
| 318 | 1.2.1.5 | **Implementacion** | 1d | 2015-09-14 | 2015-09-14 |  |  | 43.88d |  |  |  |
| 319 | 1.2.1.5.1 | **Guia de Usuario** | 1d | 2015-09-14 | 2015-09-14 |  |  | 43.88d |  |  |  |
| 320 | 1.2.1.5.1.1 | Elaborar Guia de Instalacion de APK | 1d | 2015-09-14 | 2015-09-14 |  |  | 43.88d |  |  |  |
| 321 | 1.2.1.5.1.2 | Elaborar Guia de Usuario con todos los modulos actualizados | 1d | 2015-09-14 | 2015-09-14 |  |  | 43.88d |  |  |  |
| 322 | 1.2.1.5.2 | **Preparacion de APK** | 1d | 2015-09-14 | 2015-09-14 |  |  | 43.88d |  |  |  |
| 323 | 1.2.1.5.2.1 | Creacion del archivo APK de instalacion | 1d | 2015-09-14 | 2015-09-14 |  |  | 43.88d |  |  |  |
| 324 | 1.2.1.5.2.2 | Publicacion de la Aplicación en Plataforma Google Play | 1d | 2015-09-14 | 2015-09-14 |  |  | 43.88d |  |  |  |
| 325 | 1.3 | **Reuniones Internas EJR-SOFT** | 54d | 2015-09-12 A | 2015-11-14 | 17% | 45d | 0d |  | 432h | 72h |
| 326 | 1.3.1 | **Reunion Quincenal 1** | 1d | 2015-09-12 A | 2015-09-12 A | 100% |  |  | Edwar; Julio; Roger | 72h | 72h |
| 327 | 1.3.1.1 | Elaborar Acta de Reunion | 1d | 2015-09-12 A | 2015-09-12 A | 100% |  |  | Edwar; Julio; Roger | 24h | 24h |
| 328 | 1.3.1.2 | Traspaso de Informacion | 1d | 2015-09-12 A | 2015-09-12 A | 100% |  |  | Edwar; Julio; Roger | 24h | 24h |

| ID | WBS | Task | Duration | Start | Finish | Total slack | Free slack | Resources | Work |
| --- | --- | --- | --- | --- | --- | --- | --- | --- | --- |
| 329 | 1.3.2 | **Reunion Quincenal 2** | 1d | 2015-09-26 | 2015-09-26 |  |  | Edwar; Julio; Roger | 72h |
| 330 | 1.3.2.1 | Elaborar Acta de Reunion | 1d | 2015-09-26 | 2015-09-26 | -0.12d | 0d | Edwar; Julio; Roger | 24h |
| 331 | 1.3.2.2 | Traspaso de Informacion | 1d | 2015-09-26 | 2015-09-26 | -0.12d | 0d | Edwar; Julio; Roger | 24h |
| 332 | 1.3.3 | **Reunion Quincenal 3** | 1d | 2015-10-10 | 2015-10-10 |  |  | Edwar; Julio; Roger | 72h |
| 333 | 1.3.3.1 | Elaborar Acta de Reunion | 1d | 2015-10-10 | 2015-10-10 | -0.12d | 0d | Edwar; Julio; Roger | 24h |
| 334 | 1.3.3.2 | Traspaso de Informacion | 1d | 2015-10-10 | 2015-10-10 | -0.12d | 0d | Edwar; Julio; Roger | 24h |
| 335 | 1.3.4 | **Reunion Quincenal 4** | 1d | 2015-10-24 | 2015-10-24 |  |  | Edwar; Julio; Roger | 72h |
| 336 | 1.3.4.1 | Elaborar Acta de Reunion | 1d | 2015-10-24 | 2015-10-24 | -0.12d | 0d | Edwar; Julio; Roger | 24h |
| 337 | 1.3.4.2 | Traspaso de Informacion | 1d | 2015-10-24 | 2015-10-24 | -0.12d | 0d | Edwar; Julio; Roger | 24h |
| 338 | 1.3.5 | **Reunion Quincenal 6** | 1d | 2015-11-07 | 2015-11-07 |  |  | Edwar; Julio; Roger | 72h |
| 339 | 1.3.5.1 | Elaborar Acta de Reunion | 1d | 2015-11-07 | 2015-11-07 | -0.12d | 0d | Edwar; Julio; Roger | 24h |
| 340 | 1.3.5.2 | Traspaso de Informacion | 1d | 2015-11-07 | 2015-11-07 | -0.12d | 0d | Edwar; Julio; Roger | 24h |
| 341 | 1.3.6 | **Reunion Final** | 1d | 2015-11-14 | 2015-11-14 |  |  | Edwar; Julio; Roger | 72h |
| 342 | 1.3.6.1 | Elaborar Acta de Reunion | 1d | 2015-11-14 | 2015-11-14 | -0.12d | 0d | Edwar; Julio; Roger | 24h |
| 343 | 1.3.6.2 | Traspaso de Informacion | 1d | 2015-11-14 | 2015-11-14 | -0.12d | 0d | Edwar; Julio; Roger | 24h |
| 344 | 1.4 | **Reuniones Externas EJR-SOFT - CLIENTE** | 48d | 2015-09-24 | 2015-11-19 |  |  | Edwar; Julio; Roger; Profesor | 1920h |
| 345 | 1.4.1 | **1 Presentacion del Proyecto** | 1d | 2015-09-24 | 2015-09-24 |  |  | Edwar; Julio; Roger; Profesor | 128h |
| 346 | 1.4.1.1 | Revision de Entregables de Area de Proceso PP-PMC | 1d | 2015-09-24 | 2015-09-24 | -0.12d | 0d | Edwar; Julio; Profesor; Roger | 32h |
| 347 | 1.4.1.2 | Acta de Reunion con acuerdos tomados | 1d | 2015-09-24 | 2015-09-24 | -0.12d | 0d | Edwar; Julio; Profesor; Roger | 32h |
| 348 | 1.4.1.3 | Traspaso de Informacion | 1d | 2015-09-24 | 2015-09-24 | -0.12d | 0d | Edwar; Julio; Profesor; Roger | 32h |
| 349 | 1.4.2 | **2 Presentacion del Proyecto** | 1d | 2015-10-22 | 2015-10-22 |  |  | Edwar; Julio; Roger; Profesor | 128h |
| 350 | 1.4.2.1 | Kick Off Meeting con Profesor | 1d | 2015-10-22 | 2015-10-22 | -0.12d | 0d | Edwar; Julio; Profesor; Roger | 32h |
| 351 | 1.4.2.2 | Acta de Reunion con acuerdos tomados | 1d | 2015-10-22 | 2015-10-22 | -0.12d | 0d | Edwar; Julio; Profesor; Roger | 32h |
| 352 | 1.4.2.3 | Traspaso de Informacion | 1d | 2015-10-22 | 2015-10-22 | -0.12d | 0d | Edwar; Julio; Profesor; Roger | 32h |

| ID | WBS | Task | Duration | Start | Finish | Total slack | Free slack | Resources | Work |
| --- | --- | --- | --- | --- | --- | --- | --- | --- | --- |
| 353 | 1.4.3 | **3 Presentacion del Proyecto** | 1d | 2015-11-19 | 2015-11-19 |  |  | Edwar; Julio; Roger; Profesor | 128h |
| 354 | 1.4.3.1 | Kick Off Meeting con Profesor | 1d | 2015-11-19 | 2015-11-19 | -0.12d | 0d | Edwar; Julio; Profesor; Roger | 32h |
| 355 | 1.4.3.2 | Acta de Reunion con acuerdos tomados | 1d | 2015-11-19 | 2015-11-19 | -0.12d | 0d | Edwar; Julio; Profesor; Roger | 32h |
| 356 | 1.4.3.3 | Traspaso de Informacion | 1d | 2015-11-19 | 2015-11-19 | -0.12d | 0d | Edwar; Julio; Profesor; Roger | 32h |
